# SISESA2

Schedule from MS Project, 2008-03-03 to 2008-08-06, costs in €.

## Calendars

- Estándar: Mon-Fri 09:00-13:00, 15:00-19:00; Sat-Sun off.

## Resources

| Resource | Group | Rate |
| --- | --- | --- |
| Analista Sistemas | AS | 15 |
| Analista Programador | AP | 15 |
| Programador 1 | P | 10 |
| Programador 2 | P | 10 |
| Usuario/cliente | Usuario |  |

## Schedule

| ID | WBS | Task | Duration | Start | Finish | Predecessors | Total slack | Free slack | Resources | Work | Cost |
| --- | --- | --- | --- | --- | --- | --- | --- | --- | --- | --- | --- |
| 1 | 1 | **Proyecto** | 113d | 2008-03-03 | 2008-08-06 |  | 0d |  |  | 2928h | 31,440 |
| 2 | 1.1 | Analisis y Requirimientos de la aplicación | 16d | 2008-03-03 | 2008-03-24 |  | 0d |  | Analista Sistemas; Usuario/cliente | 256h | 1,920 |
| 3 | 1.2 | Aprobación Requerimientos Funcionales de la Aplicación | 3d | 2008-03-25 | 2008-03-27 | 2 | 0d |  | Usuario/cliente | 24h |  |
| 4 | 1.3 | Analisis Funcional Bloque 1 | 13d | 2008-03-28 | 2008-04-15 | 3 | 2d | 0d | Analista Sistemas; Programador 1 | 208h | 2,600 |
| 5 | 1.4 | Analisis Funcional Bloque 2 | 11d | 2008-04-16 | 2008-04-30 | 4 | 2d | 0d | Analista Sistemas; Programador 1 | 176h | 2,200 |
| 6 | 1.5 | Compra de HW y Montaje de infraestructura y mobiliario | 35d | 2008-03-28 | 2008-05-15 | 3 | 56d |  | Usuario/cliente | 280h |  |
| 7 | 1.6 | Análisis Orgánico bloque 1 | 10d | 2008-04-02 | 2008-04-15 | 3FS+3d | 0d |  | Analista Programador; Programador 2 | 160h | 2,000 |
| 8 | 1.7 | Análisis Orgánico bloque 2 | 12d | 2008-04-16 | 2008-05-01 | 7 | 0d |  | Analista Programador; Programador 2 | 192h | 2,400 |
| 9 | 1.8 | Codificación y Pruebas Bloque 1 | 41d | 2008-05-01 | 2008-06-26 | 5 | 2d |  | Analista Sistemas; Programador 1 | 656h | 8,200 |
| 10 | 1.9 | Codificación y Pruebas Bloque 2 | 45d | 2008-05-02 | 2008-07-03 | 8 | 0d |  | Programador 2; Analista Programador | 720h | 9,000 |
| 11 | 1.10 | Pruebas Globales | 14d | 2008-07-04 | 2008-07-23 | 10, 9 | 0d |  | Analista Sistemas | 112h | 1,680 |
| 12 | 1.11 | Manual de Producción | 4d | 2008-07-04 | 2008-07-09 | 10, 9 | 16d | 0d | Analista Programador | 32h | 480 |
| 13 | 1.12 | Manual de Usuario | 4d | 2008-07-10 | 2008-07-15 | 12 | 16d |  | Analista Programador | 32h | 480 |
| 14 | 1.13 | Aceptación Aplicación por Usuario Final | 6d | 2008-07-24 | 2008-07-31 | 11 | 0d |  | Usuario/cliente | 48h |  |
| 15 | 1.14 | Puesta en Producción de la aplicación | 4d | 2008-08-01 | 2008-08-06 | 14 | 0d |  | Analista Sistemas | 32h | 480 |
